# [EPS]DiagramaGantt_MODIFICADO

Schedule from MS Project, 2015-03-23 to 2015-10-23.

## Calendars

- Standard: Mon-Fri 08:00-12:00, 13:00-17:00; Sat-Sun off. Exceptions (off unless hours are given): 2015-04-02 to 2015-04-03 (Semana Santa), 2015-05-01 (Dia del trabajo), 2015-06-30 (Dia del ejercito), 2015-09-15 (Independencia), 2015-10-20 (Dia de la Revolucion).

## Resources

| Resource |
| --- |
| Gerson Xicon |
| Marlen Arias |
| Ricardo Cortez |
| Ana Moino |

## Schedule

| ID | WBS | Task | Duration | Start | Finish | Predecessors | Total slack | Free slack | Constraint | Resources | Work |
| --- | --- | --- | --- | --- | --- | --- | --- | --- | --- | --- | --- |
| 1 | 1 | **Primer Mes** | 23d | 2015-03-23 | 2015-04-24 |  |  |  |  | Ana Moino; Gerson Xicon; Marlen Arias; Ricardo Cortez | 2128h |
| 2 | 1.1 | **Investigación de pensum, proceso de asignación, exámenes extraordinarios y control de notas** | 10d | 2015-03-23 | 2015-04-07 |  |  |  |  | Ana Moino; Gerson Xicon; Marlen Arias; Ricardo Cortez | 640h |
| 3 | 1.1.1 | Facultad de ciencias medicas | 10d | 2015-03-23 | 2015-04-07 |  | 0d |  |  | Gerson Xicon | 80h |
| 4 | 1.1.2 | Escuela de ciencias psicológicas | 10d | 2015-03-23 | 2015-04-07 |  | 0d |  |  | Ricardo Cortez | 80h |
| 5 | 1.1.3 | Facultad de odontología | 10d | 2015-03-23 | 2015-04-07 |  | 0d |  |  | Ana Moino | 80h |
| 6 | 1.1.4 | Escuela de historia | 10d | 2015-03-23 | 2015-04-07 |  | 0d |  |  | Marlen Arias | 80h |
| 7 | 1.2 | **Definición de estándares** | 7d | 2015-04-08 | 2015-04-16 | 2 |  |  |  | Ana Moino; Gerson Xicon; Marlen Arias; Ricardo Cortez | 464h |
| 8 | 1.2.1 | Estándares para la base de datos | 4d | 2015-04-08 | 2015-04-13 | 3 | 0d |  |  | Gerson Xicon | 32h |
| 9 | 1.2.2 | Estándares de programación | 3d | 2015-04-08 | 2015-04-10 | 4 | 1d | 0d |  | Ricardo Cortez | 24h |
| 10 | 1.2.3 | Estándares de presentación y/ó diseño | 3d | 2015-04-08 | 2015-04-10 | 5 | 0d |  |  | Ana Moino | 24h |
| 11 | 1.2.4 | Estándares de documentación de código | 3d | 2015-04-13 | 2015-04-15 | 9 | 1d |  |  | Ricardo Cortez | 24h |
| 12 | 1.2.5 | Estándares de realización de manuales | 3d | 2015-04-13 | 2015-04-15 | 10 | 1d |  |  | Marlen Arias; Ana Moino | 48h |
| 13 | 1.2.6 | Estándares de pruebas | 3d | 2015-04-14 | 2015-04-16 | 8 | 0d |  |  | Gerson Xicon | 24h |
| 14 | 1.2.7 | Estándar de diseño de plantillas web | 4d | 2015-04-13 | 2015-04-16 | 10 | 0d |  |  | Marlen Arias; Ana Moino | 64h |
| 15 | 1.3 | **Tecnologías y configuraciones** | 6d | 2015-04-17 | 2015-04-24 | 7 |  |  |  | Ana Moino; Gerson Xicon; Marlen Arias; Ricardo Cortez | 288h |
| 16 | 1.3.1 | Instalar y configurar tecnologías a utilizar | 2d | 2015-04-17 | 2015-04-20 | 14 | 4d | 2d |  | Marlen Arias; Ana Moino | 32h |
| 17 | 1.3.2 | Instalar y configurar servidor de pruebas locales | 2d | 2015-04-23 | 2015-04-24 | 16 | 126d |  | finish no earlier than 2015-04-24 | Ana Moino; Gerson Xicon; Marlen Arias; Ricardo Cortez | 64h |
| 18 | 2 | **Segundo Mes** | 19d | 2015-04-27 | 2015-05-22 | 1 |  |  |  | Ana Moino; Gerson Xicon; Marlen Arias; Ricardo Cortez | 1848h |
| 19 | 2.1 | **Investigación de procesos de control académico** | 19d | 2015-04-27 | 2015-05-22 | 15 |  |  |  | Ana Moino; Gerson Xicon; Marlen Arias; Ricardo Cortez | 1240h |
| 20 | 2.1.1 | Creación de horarios | 5d | 2015-04-27 | 2015-05-04 | 15 | 0d |  |  | Marlen Arias; Ricardo Cortez; Gerson Xicon | 120h |
| 21 | 2.1.2 | Manejo de pre-requisitos | 2d | 2015-05-05 | 2015-05-06 | 20 | 0d |  |  | Marlen Arias; Ana Moino; Ricardo Cortez; Gerson Xicon | 64h |
| 22 | 2.1.3 | Procesos de inscripción y pago de matricula | 3d | 2015-05-07 | 2015-05-11 | 21 | 0d |  |  | Ana Moino; Gerson Xicon | 48h |
| 23 | 2.1.4 | Distintos procesos de asignación | 3d | 2015-05-07 | 2015-05-11 | 21 | 9d |  |  | Ana Moino | 24h |
| 24 | 2.1.5 | Manejo de des-asignaciones | 3d | 2015-05-12 | 2015-05-14 | 22 | 0d |  |  | Marlen Arias; Ricardo Cortez; Gerson Xicon | 72h |
| 25 | 2.1.6 | Distintos tipos de aprobación de cursos | 4d | 2015-05-12 | 2015-05-15 | 22 | 5d |  |  | Ana Moino | 32h |
| 26 | 2.1.7 | Procesos de asignación de examen extemporáneo | 3d | 2015-05-15 | 2015-05-19 | 24 | 0d |  |  | Marlen Arias; Ricardo Cortez; Gerson Xicon | 72h |
| 27 | 2.1.8 | Manejo de pensum por vigencia y cursos con nombres antiguos | 4d | 2015-05-15 | 2015-05-20 | 24 | 2d |  |  | Ana Moino | 32h |
| 28 | 2.1.9 | Relación de catedráticos con distintas unidades académicas | 3d | 2015-05-20 | 2015-05-22 | 26 | 0d |  |  | Marlen Arias; Ricardo Cortez; Gerson Xicon | 72h |
| 29 | 2.1.10 | Manejo de notas con detalle de actividades | 3d | 2015-05-20 | 2015-05-22 | 26 | 0d |  |  | Ana Moino; Marlen Arias; Ricardo Cortez; Gerson Xicon | 96h |

| ID | WBS | Task | Duration | Start | Finish | Predecessors | Total slack | Resources | Work |
| --- | --- | --- | --- | --- | --- | --- | --- | --- | --- |
| 30 | 3 | **Tercer Mes** | 20d | 2015-05-25 | 2015-06-19 | 18 |  | Ana Moino; Gerson Xicon; Marlen Arias; Ricardo Cortez | 2176h |
| 31 | 3.1 | **Definición de la base de datos (Diagrama ER Fase I)** | 5d | 2015-05-25 | 2015-05-29 | 19 | 0d | Ana Moino; Gerson Xicon; Marlen Arias; Ricardo Cortez | 320h |
| 32 | 3.1.1 | Diagrama genérico para Escuela de historia | 5d | 2015-05-25 | 2015-05-29 | 19 | 0d | Ana Moino; Gerson Xicon; Marlen Arias; Ricardo Cortez | 160h |
| 33 | 3.2 | **Definición de la base de datos (Diagrama ER Fase II)** | 5d | 2015-06-01 | 2015-06-05 | 31 |  | Ana Moino; Gerson Xicon; Marlen Arias; Ricardo Cortez | 384h |
| 34 | 3.2.1 | Diagrama ampliado para Escuelas/facultades | 2d | 2015-06-01 | 2015-06-02 | 31 | 0d | Ana Moino; Gerson Xicon; Marlen Arias; Ricardo Cortez | 64h |
| 35 | 3.2.2 | Implementación de detalles sobre manejo de usuarios | 1d | 2015-06-03 | 2015-06-03 | 34 | 0d | Ana Moino; Gerson Xicon; Marlen Arias; Ricardo Cortez | 32h |
| 36 | 3.2.3 | Implementación de detalles sobre manejo de cursos | 2d | 2015-06-04 | 2015-06-05 | 35 | 0d | Ana Moino; Gerson Xicon; Marlen Arias; Ricardo Cortez | 64h |
| 37 | 3.2.4 | Implementación de detalles sobre manejo de asignaciones | 2d | 2015-06-04 | 2015-06-05 | 35 | 0d | Ana Moino; Gerson Xicon; Marlen Arias; Ricardo Cortez | 64h |
| 38 | 3.3 | **Definición de la base de datos (Diagrama ER Fase III)** | 5d | 2015-06-08 | 2015-06-12 | 33 |  | Ana Moino; Gerson Xicon; Marlen Arias; Ricardo Cortez | 448h |
| 39 | 3.3.1 | Implementación de detalles sobre manejo de pensum | 2d | 2015-06-08 | 2015-06-09 | 33 | 3d | Ana Moino; Gerson Xicon; Marlen Arias; Ricardo Cortez | 64h |
| 40 | 3.3.2 | Implementación de detalles sobre manejo de cursos | 2d | 2015-06-08 | 2015-06-09 | 33 | 0d | Ana Moino; Gerson Xicon; Marlen Arias; Ricardo Cortez | 64h |
| 41 | 3.3.3 | Implementación de detalles sobre manejo de notas | 2d | 2015-06-10 | 2015-06-11 | 40 | 1d | Ana Moino; Gerson Xicon; Marlen Arias; Ricardo Cortez | 64h |
| 42 | 3.3.4 | Implementación de detalles sobre manejo de des asignaciones | 3d | 2015-06-10 | 2015-06-12 | 40 | 0d | Ana Moino; Gerson Xicon; Marlen Arias; Ricardo Cortez | 96h |
| 43 | 3.4 | **Definición de la base de datos (Diagrama ER Fase IV)** | 5d | 2015-06-15 | 2015-06-19 | 38 |  | Ana Moino; Gerson Xicon; Marlen Arias; Ricardo Cortez | 384h |
| 44 | 3.4.1 | Implementación de detalles sobre manejo de notas | 2d | 2015-06-15 | 2015-06-16 | 38 | 3d | Ana Moino; Gerson Xicon; Marlen Arias; Ricardo Cortez | 64h |
| 45 | 3.4.2 | Implementación de detalles sobre manejo de pre-requisitos | 3d | 2015-06-15 | 2015-06-17 | 38 | 0d | Ana Moino; Gerson Xicon; Marlen Arias; Ricardo Cortez | 96h |
| 46 | 3.4.3 | Implementación de detalles sobre creación de horarios | 2d | 2015-06-18 | 2015-06-19 | 45 | 0d | Ana Moino; Gerson Xicon; Marlen Arias; Ricardo Cortez | 64h |
| 47 | 4 | **Cuarto Mes** | 24d | 2015-06-22 | 2015-07-24 | 30 |  | Ana Moino; Gerson Xicon; Marlen Arias; Ricardo Cortez | 1920h |
| 48 | 4.1 | **Definición de arquitectura** | 9d | 2015-06-22 | 2015-07-03 | 43 |  | Marlen Arias; Ana Moino; Gerson Xicon; Ricardo Cortez | 728h |
| 49 | 4.1.1 | Definición de Framework a utilizar | 2d | 2015-06-22 | 2015-06-23 | 43 | 7d | Gerson Xicon; Marlen Arias; Ricardo Cortez; Ana Moino | 64h |
| 50 | 4.1.2 | Diagramas de actividades | 3d | 2015-06-22 | 2015-06-24 | 43 | 0d | Gerson Xicon; Ana Moino; Marlen Arias; Ricardo Cortez | 96h |
| 51 | 4.1.3 | Consultas y validaciones sobre el ER | 3d | 2015-06-25 | 2015-06-29 | 50 | 0d | Gerson Xicon | 24h |
| 52 | 4.1.4 | Generar script de la base de datos | 2d | 2015-07-01 | 2015-07-02 | 51 | 1d | Gerson Xicon | 16h |
| 53 | 4.1.5 | Diagramas de casos de uso | 5d | 2015-06-25 | 2015-07-02 | 50 | 1d | Gerson Xicon; Ana Moino; Marlen Arias; Ricardo Cortez | 160h |
| 54 | 4.1.6 | Diagramas de clases | 3d | 2015-07-01 | 2015-07-03 | 51 | 0d | Gerson Xicon; Marlen Arias | 48h |
| 55 | 4.1.7 | Diagramas de procesos | 2d | 2015-07-01 | 2015-07-02 | 51 | 1d | Ana Moino; Marlen Arias | 32h |

| ID | WBS | Task | Duration | Start | Finish | Predecessors | Total slack | Resources | Work |
| --- | --- | --- | --- | --- | --- | --- | --- | --- | --- |
| 56 | 4.2 | **Módulo de creación de usuarios** | 10d | 2015-07-06 | 2015-07-17 | 48 |  | Ricardo Cortez | 200h |
| 57 | 4.2.1 | Definición de roles | 1d | 2015-07-06 | 2015-07-06 | 48 | 0d | Ricardo Cortez | 8h |
| 58 | 4.2.2 | Crear usuario | 1d | 2015-07-07 | 2015-07-07 | 57 | 0d | Ricardo Cortez | 8h |
| 59 | 4.2.3 | Modificar usuario | 1d | 2015-07-08 | 2015-07-08 | 58 | 0d | Ricardo Cortez | 8h |
| 60 | 4.2.4 | Eliminar usuario | 2d | 2015-07-09 | 2015-07-10 | 59 | 0d | Ricardo Cortez | 16h |
| 61 | 4.2.5 | Validar usuarios con Departamento de registro y estadística | 2d | 2015-07-13 | 2015-07-14 | 60 | 0d | Ricardo Cortez; Gerson Xicon | 32h |
| 62 | 4.2.6 | Integración | 2d | 2015-07-15 | 2015-07-16 | 61 | 0d | Ricardo Cortez; Gerson Xicon | 32h |
| 63 | 4.2.7 | Pruebas | 1d | 2015-07-17 | 2015-07-17 | 62 | 0d | Ricardo Cortez; Gerson Xicon | 16h |
| 64 | 4.3 | **Módulo de autenticación y permisos** | 4d | 2015-07-21 | 2015-07-24 | 56 |  | Ana Moino; Gerson Xicon; Marlen Arias; Ricardo Cortez | 224h |
| 65 | 4.3.1 | Crear vistas para cada rol | 1d | 2015-07-21 | 2015-07-21 | 56 | 0d | Ana Moino; Ricardo Cortez; Marlen Arias | 24h |
| 66 | 4.3.2 | Validación y redireccinamiento | 1d | 2015-07-22 | 2015-07-22 | 65 | 0d | Ana Moino; Gerson Xicon; Marlen Arias; Ricardo Cortez | 32h |
| 67 | 4.3.3 | Vistas y perfiles de usuarios administrativos | 1d | 2015-07-23 | 2015-07-23 | 66 | 0d | Ana Moino | 8h |
| 68 | 4.3.4 | Implementación | 1d | 2015-07-24 | 2015-07-24 | 67 | 0d | Ana Moino; Marlen Arias | 16h |
| 69 | 4.3.5 | Pruebas | 1d | 2015-07-24 | 2015-07-24 | 67 | 0d | Ana Moino; Marlen Arias | 16h |
| 70 | 5 | **Quinto Mes** | 20d | 2015-07-27 | 2015-08-21 | 47 |  | Ana Moino; Gerson Xicon; Marlen Arias; Ricardo Cortez | 1888h |
| 71 | 5.1 | **Parametrización** | 5d | 2015-07-27 | 2015-07-31 | 64 |  | Ana Moino; Gerson Xicon; Marlen Arias; Ricardo Cortez | 448h |
| 72 | 5.1.1 | Crear parámetros para creación de pensum | 2d | 2015-07-27 | 2015-07-28 | 64 | 0d | Marlen Arias; Gerson Xicon | 32h |
| 73 | 5.1.2 | Crear parámetros para procesos de asignación | 3d | 2015-07-29 | 2015-07-31 | 72 | 0d | Marlen Arias; Gerson Xicon | 48h |
| 74 | 5.1.3 | Crear parámetros para procesos de desasignación | 3d | 2015-07-29 | 2015-07-31 | 72 | 0d | Marlen Arias; Gerson Xicon | 48h |
| 75 | 5.1.4 | Crear parámetros para ingreso de notas | 5d | 2015-07-27 | 2015-07-31 | 64 | 0d | Ana Moino; Ricardo Cortez | 80h |
| 76 | 5.1.5 | Crear parámetros para asignación de exámenes de recuperación | 5d | 2015-07-27 | 2015-07-31 | 64 | 0d | Ana Moino; Ricardo Cortez | 80h |
| 77 | 5.2 | **Módulo de creación y administración de facultades y escuelas** | 7d | 2015-08-03 | 2015-08-11 | 71 |  | Ana Moino; Ricardo Cortez | 480h |
| 78 | 5.2.1 | Crear Facultad/Escuela | 2d | 2015-08-03 | 2015-08-04 | 71 | 5d | Ricardo Cortez; Ana Moino | 32h |
| 79 | 5.2.2 | Ingreso de Sedes (Centrales / Regionales) | 2d | 2015-08-03 | 2015-08-04 | 71 | 5d | Ricardo Cortez; Ana Moino | 32h |
| 80 | 5.2.3 | Ingreso de Salones | 2d | 2015-08-03 | 2015-08-04 | 71 | 0d | Ricardo Cortez; Ana Moino | 32h |
| 81 | 5.2.4 | Modificar Facultad/Escuela | 1d | 2015-08-05 | 2015-08-05 | 80 | 0d | Ricardo Cortez; Ana Moino | 16h |
| 82 | 5.2.5 | Modificación sobre Sedes | 2d | 2015-08-05 | 2015-08-06 | 80 | 3d | Ricardo Cortez; Ana Moino | 32h |
| 83 | 5.2.6 | Modificación de salones | 2d | 2015-08-05 | 2015-08-06 | 80 | 3d | Ricardo Cortez; Ana Moino | 32h |
| 84 | 5.2.7 | Eliminar Facultad/Escuela | 2d | 2015-08-06 | 2015-08-07 | 81 | 2d | Ricardo Cortez; Ana Moino | 32h |
| 85 | 5.2.8 | Eliminar sedes | 2d | 2015-08-06 | 2015-08-07 | 81 | 2d | Ricardo Cortez; Ana Moino | 32h |
| 86 | 5.2.9 | Eliminar salones | 2d | 2015-08-06 | 2015-08-07 | 81 | 0d | Ricardo Cortez; Ana Moino | 32h |
| 87 | 5.2.10 | Elaboración de Manuales | 2d | 2015-08-10 | 2015-08-11 | 86 | 0d | Ricardo Cortez; Ana Moino | 32h |
| 88 | 5.2.11 | Integración | 2d | 2015-08-10 | 2015-08-11 | 86 | 0d | Ricardo Cortez; Ana Moino | 32h |
| 89 | 5.2.12 | Pruebas | 2d | 2015-08-10 | 2015-08-11 | 86 | 0d | Ricardo Cortez; Ana Moino | 32h |

| ID | WBS | Task | Duration | Start | Finish | Predecessors | Total slack | Resources | Work |
| --- | --- | --- | --- | --- | --- | --- | --- | --- | --- |
| 90 | 5.3 | **Módulo de creación y administración de cursos** | 8d | 2015-08-12 | 2015-08-21 | 77 |  | Gerson Xicon; Marlen Arias | 320h |
| 91 | 5.3.1 | Crear Curso | 1d | 2015-08-12 | 2015-08-12 | 77 | 0d | Gerson Xicon; Marlen Arias | 16h |
| 92 | 5.3.2 | Modificar Curso | 1d | 2015-08-13 | 2015-08-13 | 91 | 6d | Gerson Xicon; Marlen Arias | 16h |
| 93 | 5.3.3 | Eliminar Curso | 1d | 2015-08-13 | 2015-08-13 | 91 | 0d | Gerson Xicon; Marlen Arias | 16h |
| 94 | 5.3.4 | Crear Sección | 1d | 2015-08-14 | 2015-08-14 | 93 | 5d | Gerson Xicon; Marlen Arias | 16h |
| 95 | 5.3.5 | Modificar Sección | 1d | 2015-08-14 | 2015-08-14 | 93 | 5d | Gerson Xicon; Marlen Arias | 16h |
| 96 | 5.3.6 | Eliminar Sección | 1d | 2015-08-14 | 2015-08-14 | 93 | 0d | Gerson Xicon; Marlen Arias | 16h |
| 97 | 5.3.7 | Importación de cursos por archivos externos | 1d | 2015-08-17 | 2015-08-17 | 96 | 4d | Gerson Xicon; Marlen Arias | 16h |
| 98 | 5.3.8 | Organización de cursos por sección | 1d | 2015-08-17 | 2015-08-17 | 96 | 0d | Gerson Xicon; Marlen Arias | 16h |
| 99 | 5.3.9 | Elaboración de Manuales | 1d | 2015-08-18 | 2015-08-18 | 98 | 0d | Gerson Xicon; Marlen Arias | 16h |
| 100 | 5.3.10 | Integración | 2d | 2015-08-19 | 2015-08-20 | 99 | 0d | Gerson Xicon; Marlen Arias | 32h |
| 101 | 5.3.11 | Pruebas | 1d | 2015-08-21 | 2015-08-21 | 100 | 0d | Gerson Xicon; Marlen Arias | 16h |
| 102 | 6 | **Sexto Mes** | 24d | 2015-08-24 | 2015-09-25 | 70 |  | Ana Moino; Gerson Xicon; Marlen Arias; Ricardo Cortez | 2024h |
| 103 | 6.1 | **Módulo de Pensum** | 6d | 2015-08-24 | 2015-08-31 | 90 |  | Ana Moino; Marlen Arias | 352h |
| 104 | 6.1.1 | Listar cursos | 3d | 2015-08-24 | 2015-08-26 | 90 | 3d | Ana Moino; Marlen Arias | 48h |
| 105 | 6.1.2 | Modificar cursos | 3d | 2015-08-24 | 2015-08-26 | 90 | 0d | Ana Moino; Marlen Arias | 48h |
| 106 | 6.1.3 | Administración pre-post requisitos | 3d | 2015-08-27 | 2015-08-31 | 105 | 0d | Ana Moino; Marlen Arias | 48h |
| 107 | 6.1.4 | Administración de créditos por curso | 4d | 2015-08-24 | 2015-08-27 | 90 | 0d | Ana Moino; Marlen Arias | 64h |
| 108 | 6.1.5 | Elaboración de Manuales | 1d | 2015-08-28 | 2015-08-28 | 107 | 0d | Ana Moino; Marlen Arias | 16h |
| 109 | 6.1.6 | Integración | 1d | 2015-08-31 | 2015-08-31 | 108 | 0d | Ana Moino; Marlen Arias | 16h |
| 110 | 6.1.7 | Pruebas | 1d | 2015-08-31 | 2015-08-31 | 108 | 0d | Ana Moino; Marlen Arias | 16h |
| 111 | 6.2 | **Módulo de administración de estudiantes** | 8d | 2015-09-01 | 2015-09-10 | 103 |  | Gerson Xicon; Ricardo Cortez | 280h |
| 112 | 6.2.1 | Perfil del estudiante | 3d | 2015-09-01 | 2015-09-03 | 103 | 0d | Ricardo Cortez | 24h |
| 113 | 6.2.2 | Información de contactos | 3d | 2015-09-04 | 2015-09-08 | 112 | 0d | Ricardo Cortez | 24h |
| 114 | 6.2.3 | Agregar acceso a asignación de estudiantes | 4d | 2015-09-04 | 2015-09-09 | 112 | 1d | Ricardo Cortez | 32h |
| 115 | 6.2.4 | Agregar acceso a desasignación de estudiantes | 4d | 2015-09-04 | 2015-09-09 | 112 | 1d | Ricardo Cortez | 32h |
| 116 | 6.2.5 | Elaboración de Manuales | 1d | 2015-09-09 | 2015-09-09 | 113 | 0d | Ricardo Cortez | 8h |
| 117 | 6.2.6 | Integración | 1d | 2015-09-10 | 2015-09-10 | 116 | 0d | Gerson Xicon; Ricardo Cortez | 16h |
| 118 | 6.2.7 | Pruebas | 1d | 2015-09-10 | 2015-09-10 | 116 | 0d | Gerson Xicon; Ricardo Cortez | 16h |

| ID | WBS | Task | Duration | Start | Finish | Predecessors | Total slack | Free slack | Constraint | Resources | Work |
| --- | --- | --- | --- | --- | --- | --- | --- | --- | --- | --- | --- |
| 119 | 6.3 | **Módulo de administración de catedrático** | 19d | 2015-08-24 | 2015-09-18 |  | 5d |  |  | Gerson Xicon; Ricardo Cortez | 480h |
| 120 | 6.3.1 | Perfil del catedrático | 5d | 2015-08-24 | 2015-08-28 |  | 5d | 0d |  | Gerson Xicon | 40h |
| 121 | 6.3.2 | Agregar acceso a ingreso de notas | 4d | 2015-08-31 | 2015-09-03 | 120 | 5d | 0d |  | Gerson Xicon | 32h |
| 122 | 6.3.3 | Agregar acceso a consulta de notas | 4d | 2015-09-04 | 2015-09-09 | 121 | 5d | 0d |  | Gerson Xicon | 32h |
| 123 | 6.3.4 | Agregar acceso a consulta de estudiantes | 3d | 2015-09-10 | 2015-09-14 | 122 | 5d | 0d |  | Gerson Xicon | 24h |
| 124 | 6.3.5 | Elaboración de Manuales | 1d | 2015-09-16 | 2015-09-16 | 123 | 5d | 0d |  | Gerson Xicon; Ricardo Cortez | 16h |
| 125 | 6.3.6 | Integración | 1d | 2015-09-17 | 2015-09-17 | 124 | 5d | 0d |  | Gerson Xicon; Ricardo Cortez | 16h |
| 126 | 6.3.7 | Pruebas | 1d | 2015-09-18 | 2015-09-18 | 125 | 5d |  |  | Gerson Xicon; Ricardo Cortez | 16h |
| 127 | 6.4 | **Módulo de asignación de estudiantes** | 5d | 2015-09-21 | 2015-09-25 | 111 |  |  |  | Ana Moino; Marlen Arias | 144h |
| 128 | 6.4.1 | Listado de cursos disponibles | 2d | 2015-09-21 | 2015-09-22 | 111 | 2d | 0d |  | Ana Moino; Marlen Arias | 32h |
| 129 | 6.4.2 | Integración | 1d | 2015-09-23 | 2015-09-23 | 128 | 2d |  |  | Ana Moino; Marlen Arias | 16h |
| 130 | 6.4.3 | Pruebas | 1d | 2015-09-23 | 2015-09-23 | 128 | 2d |  |  | Ana Moino; Marlen Arias | 16h |
| 131 | 7 | **Septimo Mes** | 19d | 2015-09-28 | 2015-10-23 | 102 |  |  |  | Ana Moino; Gerson Xicon; Marlen Arias; Ricardo Cortez | 1288h |
| 132 | 7.1 | **Módulo de desasignación de estudiantes** | 3d | 2015-09-28 | 2015-09-30 | 127 |  |  |  | Ana Moino; Marlen Arias | 112h |
| 133 | 7.1.1 | Listado de cursos asignados | 2d | 2015-09-28 | 2015-09-29 | 127 | 0d |  |  | Ana Moino; Marlen Arias | 32h |
| 134 | 7.1.2 | Integración | 1d | 2015-09-30 | 2015-09-30 | 133 | 0d |  |  | Ana Moino; Marlen Arias | 16h |
| 135 | 7.1.3 | Pruebas | 1d | 2015-09-30 | 2015-09-30 | 133, 134 | 0d |  |  | Ana Moino; Marlen Arias | 16h |
| 136 | 7.2 | **Módulo de ingreso de notas** | 4d | 2015-10-01 | 2015-10-06 | 132 |  |  |  | Ricardo Cortez | 80h |
| 137 | 7.2.1 | Listado de estudiantes asignados | 2d | 2015-10-01 | 2015-10-02 | 132 | 0d |  |  | Ricardo Cortez | 16h |
| 138 | 7.2.2 | Asociación de nota a estudiante | 2d | 2015-10-05 | 2015-10-06 | 137 | 0d |  |  | Ricardo Cortez | 16h |
| 139 | 7.2.3 | Integración | 1d | 2015-10-06 | 2015-10-06 | 138 | 12d |  | start no earlier than 2015-10-06 | Ricardo Cortez | 8h |
| 140 | 7.2.4 | Pruebas | 1d | 2015-10-06 | 2015-10-06 | 138 | 12d |  | start no earlier than 2015-10-06 | Ricardo Cortez | 8h |
| 141 | 7.3 | **Módulo de consulta de notas** | 4d | 2015-10-07 | 2015-10-12 | 136 |  |  |  | Ricardo Cortez | 168h |
| 142 | 7.3.1 | Listado de notas por estudiante | 3d | 2015-10-07 | 2015-10-09 | 136 | 1d |  |  | Ricardo Cortez | 24h |
| 143 | 7.3.2 | Promedio de notas por semestre | 3d | 2015-10-07 | 2015-10-09 | 136 | 1d |  |  | Ricardo Cortez | 24h |
| 144 | 7.3.3 | Promedio general de notas | 3d | 2015-10-07 | 2015-10-09 | 136 | 1d |  |  | Ricardo Cortez | 24h |
| 145 | 7.3.4 | Reporte de estudiantes asignados | 3d | 2015-10-07 | 2015-10-09 | 136 | 1d |  |  | Ricardo Cortez | 24h |
| 146 | 7.3.5 | Reporte de estudiantes aprobados | 3d | 2015-10-07 | 2015-10-09 | 136 | 0d |  |  | Ricardo Cortez | 24h |
| 147 | 7.3.6 | Integración | 1d | 2015-10-12 | 2015-10-12 | 146 | 0d |  |  | Ricardo Cortez | 8h |
| 148 | 7.3.7 | Pruebas | 1d | 2015-10-12 | 2015-10-12 | 146 | 0d |  |  | Ricardo Cortez | 8h |

| ID | WBS | Task | Duration | Start | Finish | Predecessors | Total slack | Constraint | Resources | Work |
| --- | --- | --- | --- | --- | --- | --- | --- | --- | --- | --- |
| 149 | 7.4 | **Módulo de consulta de estudiantes** | 3d | 2015-10-13 | 2015-10-15 | 141 |  |  | Gerson Xicon | 96h |
| 150 | 7.4.1 | Listado de estudiantes asignados | 3d | 2015-10-13 | 2015-10-15 | 141 | 0d |  | Gerson Xicon | 24h |
| 151 | 7.4.2 | Reporte de estudiantes asignados | 2d | 2015-10-13 | 2015-10-14 | 141 | 1d |  | Gerson Xicon | 16h |
| 152 | 7.4.3 | Reporte de estudiantes aprobados | 2d | 2015-10-13 | 2015-10-14 | 141 | 0d |  | Gerson Xicon | 16h |
| 153 | 7.4.4 | Integración | 1d | 2015-10-15 | 2015-10-15 | 152 | 0d |  | Gerson Xicon | 8h |
| 154 | 7.4.5 | Pruebas | 1d | 2015-10-15 | 2015-10-15 | 152 | 0d |  | Gerson Xicon | 8h |
| 155 | 7.5 | **Módulo de administradores** | 2d | 2015-10-16 | 2015-10-19 | 90 |  |  | Ana Moino; Marlen Arias | 96h |
| 156 | 7.5.1 | Asignar actividades a los distintos tipos de administradores | 2d | 2015-10-16 | 2015-10-19 | 90 | 0d |  | Ana Moino; Marlen Arias | 32h |
| 157 | 7.5.2 | Integración | 1d | 2015-10-19 | 2015-10-19 | 156 | 3d | start no earlier than 2015-10-19 | Ana Moino; Marlen Arias | 16h |
| 158 | 7.5.3 | Pruebas | 1d | 2015-10-19 | 2015-10-19 | 156 | 3d | start no earlier than 2015-10-19 | Ana Moino; Marlen Arias | 16h |
| 159 | 7.6 | **Integración de pago de examen de recuperación** | 2d | 2015-10-20 | 2015-10-21 | 155 |  |  | Marlen Arias; Ricardo Cortez | 64h |
| 160 | 7.6.1 | Integración | 1d | 2015-10-21 | 2015-10-21 | 155 | 0d |  | Marlen Arias; Ricardo Cortez | 16h |
| 161 | 7.6.2 | Pruebas | 1d | 2015-10-21 | 2015-10-21 | 155 | 0d |  | Marlen Arias; Ricardo Cortez | 16h |
| 162 | 7.7 | Migración del sistema | 1d | 2015-10-22 | 2015-10-22 | 161 | 0d |  | Ana Moino; Gerson Xicon; Marlen Arias; Ricardo Cortez | 32h |
| 163 | 7.8 | Pruebas y capacitación de usuarios | 1d | 2015-10-23 | 2015-10-23 | 162 | 0d |  | Ana Moino; Gerson Xicon; Marlen Arias; Ricardo Cortez | 32h |
